# lab3

Schedule from MS Project, 2022-10-26 to 2022-12-14, status date 2022-11-23, costs in $, A marks actual dates.

## Calendars

- Standard: Mon-Fri 08:00-12:00, 13:00-17:00; Sat-Sun off.

## Resources

| Resource | Rate |
| --- | --- |
| Lương Duy Hưng | 20 |
| Lương Quang Khánh | 20 |
| Nguyễn Quý Hải | 20 |
| Trần Quốc Việt | 20 |

## Schedule

| ID | WBS | Task | Type | Duration | Start | Finish | Predecessors | Complete | Remaining | Baseline start | Baseline finish | Baseline duration | Baseline 1 start | Baseline 1 finish | Total slack | Free slack | Resources | Work | Actual work | Cost | Baseline cost | Actual cost |
| --- | --- | --- | --- | --- | --- | --- | --- | --- | --- | --- | --- | --- | --- | --- | --- | --- | --- | --- | --- | --- | --- | --- |
| 1 | 1 | **Total** |  | 35.5d | 2022-10-26 A | 2022-12-14 |  | 71% | 10.16d | 2022-10-26 | 2022-12-09 | 32.75d | 2022-10-26 | 2022-12-14 | 0d |  |  | 726h | 536h | 14,520 | 13,880 | 10,720 |
| 2 | 1.1 | **Implementations** |  | 30.5d | 2022-10-26 A | 2022-12-07 |  | 83% | 5.05d | 2022-10-26 | 2022-12-02 | 27.75d | 2022-10-26 | 2022-12-07 | 0d |  |  | 630h | 536h | 12,600 | 11,960 | 10,720 |
| 3 | 1.1.1 | Build users DB |  | 34h | 2022-10-26 A | 2022-11-01 A |  | 100% |  | 2022-10-26 | 2022-10-27 | 16h | 2022-10-26 | 2022-11-01 |  |  | Nguyễn Quý Hải; Lương Duy Hưng; Lương Quang Khánh; Trần Quốc Việt | 96h | 96h | 1,920 | 1,280 | 1,920 |
| 4 | 1.1.2 | **Student** |  | 16.75d | 2022-10-28 A | 2022-11-21 A |  | 100% |  | 2022-10-28 | 2022-11-17 | 14.5d | 2022-10-28 | 2022-11-21 |  |  |  | 62h | 62h | 1,240 | 1,240 | 1,240 |
| 5 | 1.1.2.1 | Build students DB |  | 20h | 2022-11-01 A | 2022-11-03 A | 3 | 100% |  | 2022-10-28 | 2022-11-01 | 20h | 2022-11-01 | 2022-11-03 |  |  | Trần Quốc Việt | 20h | 20h | 400 | 400 | 400 |
| 6 | 1.1.2.2 | Build subjects DB |  | 10h | 2022-10-28 A | 2022-10-31 A |  | 100% |  | 2022-10-28 | 2022-10-31 | 10h | 2022-10-28 | 2022-10-31 |  |  | Lương Duy Hưng | 10h | 10h | 200 | 200 | 200 |
| 7 | 1.1.2.3 | Allow student to choose subjects of interest |  | 16h | 2022-11-14 A | 2022-11-15 A | 5, 6 | 100% |  | 2022-11-10 | 2022-11-14 | 16h | 2022-11-14 | 2022-11-15 |  |  | Nguyễn Quý Hải | 16h | 16h | 320 | 320 | 320 |
| 8 | 1.1.2.4 | Allow student to add detailed information (ID, school, grade, etc.) |  | 16h | 2022-11-17 A | 2022-11-21 A | 5, 6 | 100% |  | 2022-11-15 | 2022-11-17 | 16h | 2022-11-17 | 2022-11-21 |  |  | Lương Duy Hưng | 16h | 16h | 320 | 320 | 320 |
| 9 | 1.1.3 | **Teacher** |  | 24.25d | 2022-10-28 A | 2022-12-01 |  | 77% | 5.54d | 2022-10-28 | 2022-12-01 | 24.25d | 2022-10-28 | 2022-12-01 | 4.25d |  |  | 70h | 54h | 1,400 | 1,400 | 1,080 |
| 10 | 1.1.3.1 | Build teachers DB |  | 20h | 2022-11-01 A | 2022-11-03 A | 3 | 100% |  | 2022-10-28 | 2022-11-01 | 20h | 2022-11-01 | 2022-11-03 |  |  | Lương Quang Khánh | 20h | 20h | 400 | 400 | 400 |
| 11 | 1.1.3.2 | Allow teacher to add basic personal information |  | 8h | 2022-11-03 A | 2022-11-04 A | 10 | 100% |  | 2022-11-01 | 2022-11-02 | 8h | 2022-11-03 | 2022-11-04 |  |  | Lương Quang Khánh | 8h | 8h | 160 | 160 | 160 |
| 12 | 1.1.3.3 | Allow teacher to add expertise | manual | 8h | 2022-10-28 A | 2022-10-28 A | 6, 10 | 100% |  | 2022-10-28 | 2022-10-28 | 8h | 2022-10-28 | 2022-10-28 |  |  | Nguyễn Quý Hải | 8h | 8h | 160 | 160 | 160 |
| 13 | 1.1.3.4 | Allow teacher to set a base pricings (daily, weekly, etc.) |  | 4h | 2022-11-09 A | 2022-11-10 A | 11, 12 | 100% |  | 2022-11-07 | 2022-11-07 | 4h | 2022-11-09 | 2022-11-10 |  |  | Trần Quốc Việt | 4h | 4h | 80 | 80 | 80 |
| 14 | 1.1.3.5 | Allow teacher to submit the profile for reviewing by admins |  | 8h | 2022-11-10 A | 2022-11-11 A | 11, 12, 13 | 100% |  | 2022-11-08 | 2022-11-08 | 8h | 2022-11-10 | 2022-11-11 |  |  | Trần Quốc Việt | 8h | 8h | 160 | 160 | 160 |
| 15 | 1.1.3.6 | Show teacher's reviews in their profile |  | 10h | 2022-11-30 | 2022-12-01 | 20 |  |  | 2022-11-25 | 2022-11-28 | 10h | 2022-11-30 | 2022-12-01 | 4.25d |  | Lương Duy Hưng | 10h |  | 200 | 200 |  |
| 16 | 1.1.3.7 | Show feedbacks from students privately |  | 12h | 2022-11-18 A | 2022-11-28 | 21 | 50% | 6h | 2022-11-29 | 2022-12-01 | 12h | 2022-11-18 | 2022-11-28 | 7.25d |  | Nguyễn Quý Hải | 12h | 6h | 240 | 240 | 120 |
| 17 | 1.1.4 | **Teacher - Student interactions** |  | 15.25d | 2022-11-03 A | 2022-11-24 |  | 91% | 1.33d | 2022-11-01 | 2022-11-24 | 17d | 2022-11-03 | 2022-11-24 | 8.5d |  |  | 92h | 84h | 1,840 | 1,840 | 1,680 |
| 18 | 1.1.4.1 | Recommend suitable teachers to students |  | 32h | 2022-11-21 A | 2022-11-24 | 10, 5, 6 | 75% | 8h | 2022-11-18 | 2022-11-24 | 32h | 2022-11-21 | 2022-11-24 | 8.5d |  | Lương Quang Khánh | 32h | 24h | 640 | 640 | 480 |
| 19 | 1.1.4.2 | Search for teachers based on subject, teachers’ location, suitable teaching date, level (fundamental, advanced, …) |  | 28h | 2022-11-03 A | 2022-11-10 A | 5, 6, 10 | 100% |  | 2022-11-01 | 2022-11-14 | 28h | 2022-11-03 | 2022-11-10 |  |  | Nguyễn Quý Hải | 28h | 28h | 560 | 560 | 560 |
| 20 | 1.1.4.3 | Can leave ratings & reviews after learning |  | 16h | 2022-11-08 A | 2022-11-15 A | 5, 10 | 100% |  | 2022-11-09 | 2022-11-11 | 16h | 2022-11-08 | 2022-11-15 |  |  | Trần Quốc Việt | 16h | 16h | 320 | 320 | 320 |
| 21 | 1.1.4.4 | Can leave feedback to teachers (anonimity is optional) |  | 16h | 2022-11-14 A | 2022-11-16 A | 5, 10 | 100% |  | 2022-11-04 | 2022-11-14 | 16h | 2022-11-14 | 2022-11-16 |  |  | Trần Quốc Việt | 16h | 16h | 320 | 320 | 320 |
| 22 | 1.1.5 | **Communication system** |  | 17d | 2022-11-03 A | 2022-11-28 |  | 93% | 1.24d | 2022-11-01 | 2022-11-18 | 13d | 2022-11-03 | 2022-11-28 | 2.25d |  |  | 192h | 178h | 3,840 | 3,840 | 3,560 |
| 23 | 1.1.5.1 | Chatbox |  | 80h | 2022-11-04 A | 2022-11-28 | 5, 10 | 83% | 14h | 2022-11-04 | 2022-11-18 | 80h | 2022-11-04 | 2022-11-28 | 2.25d | 0d | Lương Quang Khánh | 80h | 66h | 1,600 | 1,600 | 1,320 |
| 24 | 1.1.5.2 | Voice/Video call |  | 80h | 2022-11-03 A | 2022-11-17 A | 5, 10 | 100% |  | 2022-11-01 | 2022-11-15 | 80h | 2022-11-03 | 2022-11-17 |  |  | Lương Duy Hưng | 80h | 80h | 1,600 | 1,600 | 1,600 |
| 25 | 1.1.5.3 | Phone number (basic contact method) |  | 8h | 2022-11-17 A | 2022-11-18 A | 5, 10 | 100% |  | 2022-11-15 | 2022-11-15 | 8h | 2022-11-17 | 2022-11-18 |  |  | Nguyễn Quý Hải | 8h | 8h | 160 | 160 | 160 |
| 26 | 1.1.5.4 | Integrate with payment methods |  | 24h | 2022-11-03 A | 2022-11-08 A | 5, 10 | 100% |  | 2022-11-01 | 2022-11-04 | 24h | 2022-11-03 | 2022-11-08 |  |  | Trần Quốc Việt | 24h | 24h | 480 | 480 | 480 |

| ID | WBS | Task | Duration | Start | Finish | Predecessors | Complete | Remaining | Baseline start | Baseline finish | Baseline duration | Baseline 1 start | Baseline 1 finish | Total slack | Resources | Work | Actual work | Cost | Baseline cost | Actual cost |
| --- | --- | --- | --- | --- | --- | --- | --- | --- | --- | --- | --- | --- | --- | --- | --- | --- | --- | --- | --- | --- |
| 27 | 1.1.6 | **Customer service** | 20.25d | 2022-11-07 A | 2022-12-05 |  | 60% | 8.1d | 2022-11-02 | 2022-11-22 | 14d | 2022-11-07 | 2022-12-05 | 2.25d |  | 40h | 24h | 800 | 800 | 480 |
| 28 | 1.1.6.1 | Build customer service DB | 16h | 2022-11-07 A | 2022-11-08 A | 3 | 100% |  | 2022-11-02 | 2022-11-04 | 16h | 2022-11-07 | 2022-11-08 |  | Lương Quang Khánh | 16h | 16h | 320 | 320 | 320 |
| 29 | 1.1.6.2 | Answer support message | 16h | 2022-11-28 | 2022-12-05 | 23, 28 |  |  | 2022-11-18 | 2022-11-22 | 16h | 2022-11-28 | 2022-12-05 | 2.25d | Nguyễn Quý Hải | 16h |  | 320 | 320 |  |
| 30 | 1.1.6.3 | Answer hotline calls (aka. Urgent contact) | 8h | 2022-11-09 A | 2022-11-09 A | 28 | 100% |  | 2022-11-04 | 2022-11-07 | 8h | 2022-11-09 | 2022-11-09 |  | Nguyễn Quý Hải | 8h | 8h | 160 | 160 | 160 |
| 31 | 1.1.7 | **Admin** | 18.25d | 2022-11-11 A | 2022-12-07 |  | 49% | 9.36d | 2022-11-09 | 2022-12-02 | 17.75d | 2022-11-11 | 2022-12-07 | 0d |  | 78h | 38h | 1,560 | 1,560 | 760 |
| 32 | 1.1.7.1 | Allow tracking of chat messages | 12h | 2022-11-28 | 2022-11-30 | 23 |  |  | 2022-11-18 | 2022-11-21 | 12h | 2022-11-28 | 2022-11-30 | 5.25d | Trần Quốc Việt | 12h |  | 240 | 240 |  |
| 33 | 1.1.7.2 | Allow tracking of reviews | 24h | 2022-11-29 | 2022-12-07 | 20 |  |  | 2022-11-24 | 2022-12-02 | 24h | 2022-11-29 | 2022-12-07 | 0d | Nguyễn Quý Hải | 24h |  | 480 | 480 |  |
| 34 | 1.1.7.3 | Allow tracking of feedbacks | 24h | 2022-11-21 A | 2022-11-25 | 21 | 83% | 4h | 2022-11-16 | 2022-11-22 | 24h | 2022-11-21 | 2022-11-25 | 7.5d | Nguyễn Quý Hải | 24h | 20h | 480 | 480 | 400 |
| 35 | 1.1.7.4 | Allow manual user banning | 12h | 2022-11-21 A | 2022-11-22 A | 3 | 100% |  | 2022-11-14 | 2022-11-16 | 12h | 2022-11-21 | 2022-11-22 |  | Trần Quốc Việt | 12h | 12h | 240 | 240 | 240 |
| 36 | 1.1.7.5 | Allow to approve/deny teachers' profiles | 6h | 2022-11-11 A | 2022-11-11 A | 14 | 100% |  | 2022-11-09 | 2022-11-09 | 6h | 2022-11-11 | 2022-11-11 |  | Trần Quốc Việt | 6h | 6h | 120 | 120 | 120 |
| 37 | 1.2 | **Testing** | 5d | 2022-12-07 | 2022-12-14 |  |  |  | 2022-12-02 | 2022-12-09 | 5d | 2022-12-07 | 2022-12-14 | 0d |  | 96h |  | 1,920 | 1,920 |  |
| 38 | 1.2.1 | User testing | 24h | 2022-12-07 | 2022-12-12 | 2 |  |  | 2022-12-02 | 2022-12-07 | 24h | 2022-12-07 | 2022-12-12 | 2d | Lương Duy Hưng | 24h |  | 480 | 480 |  |
| 39 | 1.2.2 | Smoke testing | 8h | 2022-12-07 | 2022-12-08 | 2 |  |  | 2022-12-02 | 2022-12-05 | 8h | 2022-12-07 | 2022-12-08 | 4d | Nguyễn Quý Hải | 8h |  | 160 | 160 |  |
| 40 | 1.2.3 | System testing | 40h | 2022-12-07 | 2022-12-14 | 2 |  |  | 2022-12-02 | 2022-12-09 | 40h | 2022-12-07 | 2022-12-14 | 0d | Trần Quốc Việt | 40h |  | 800 | 800 |  |
| 41 | 1.2.4 | Stress test | 24h | 2022-12-07 | 2022-12-12 | 2 |  |  | 2022-12-02 | 2022-12-07 | 24h | 2022-12-07 | 2022-12-12 | 2d | Lương Quang Khánh | 24h |  | 480 | 480 |  |
